How a schedule from MS Project changed from version to version. A marks actual dates.

## Version 1 (saved 2021-04-12)

Note of the change: 进度计划提交

| ID | WBS | Task | Duration | Start | Finish | Predecessors | Total float | Constraint |
| --- | --- | --- | --- | --- | --- | --- | --- | --- |
| 1 | 1 | **项目启动** | 10d | 2021-03-02 | 2021-03-13 |  |  |  |
| 2 |  | 设施准备 | 3d | 2021-03-02 | 2021-03-05 |  | 19.88d |  |
| 3 |  | 制定计划 | 3d | 2021-03-08 | 2021-03-11 |  | 14.88d | start no earlier than 2021-03-08 |
| 4 |  | 人员分配 | 1d | 2021-03-11 | 2021-03-12 | 3 | 14.88d |  |
| 5 | 2 | **深化设计** | 13d | 2021-03-15 | 2021-03-31 |  |  |  |
| 6 |  | 拟定合同 | 3d | 2021-03-15 | 2021-03-18 |  | 35d |  |
| 7 |  | 拟定需求文档 | 3d | 2021-03-18 | 2021-03-23 | 6 | 35d |  |
| 8 |  | 概要设计 | 2d | 2021-03-23 | 2021-03-25 | 7 | 35d |  |
| 9 |  | 详细设计 | 3d | 2021-03-25 | 2021-03-30 | 8 | 35d |  |
| 10 | 3 | **系统实现** | 65d | 2021-04-01 | 2021-06-30 | 1, 5 |  |  |
| 11 |  | 功能分配 | 5d | 2021-04-01 | 2021-04-08 | 9 | 33d |  |
| 12 |  | 模块划分 | 5d | 2021-04-09 | 2021-04-16 |  | 102d | start no earlier than 2021-04-09 |
| 13 |  | 建立统一的代码编写标准 | 2d | 2021-04-19 | 2021-04-21 |  | 49d | start no earlier than 2021-04-19 |
| 14 |  | 编写代码 | 50d | 2021-04-22 | 2021-06-30 | 13 | 48.12d | finish no earlier than 2021-06-30 |
| 15 | 4 | **系统测试** | 57d | 2021-04-30 | 2021-07-17 | 1, 5, 10 |  |  |
| 16 |  | 模块1测试 | 8d | 2021-04-30 | 2021-05-12 |  | 59d |  |
| 17 |  | 模块2测试 | 8d | 2021-05-12 | 2021-05-24 | 16 | 59d |  |
| 18 |  | 模块3测试 | 6d | 2021-05-25 | 2021-06-02 |  |  |  |
| 19 |  | 模块4测试 | 6d | 2021-06-03 | 2021-06-11 |  |  |  |
| 20 |  | 模块5测试 | 12d | 2021-06-14 | 2021-06-30 |  |  |  |
| 21 | 5 | **系统安装调试** | 10d | 2021-07-12 | 2021-07-26 | 1, 5, 10, 15 |  |  |
| 22 |  | 安装 | 2d | 2021-07-12 | 2021-07-14 |  | 24d |  |
| 23 |  | 调试 | 7d | 2021-07-14 | 2021-07-23 | 22 | 24d |  |
| 24 | 6 | **系统试运行和培训** | 10d | 2021-08-02 | 2021-08-16 | 1, 5, 10, 15, 21 |  |  |
| 25 |  | 使用培训 | 1d | 2021-08-02 | 2021-08-03 |  | 18d |  |
| 26 |  | 试运行 | 5d | 2021-08-03 | 2021-08-10 | 25 | 18d |  |
| 27 | 7 | **竣工验收** | 3d | 2021-08-17 | 2021-08-19 | 1, 5, 10, 15, 21, 24 |  |  |
| 28 |  | 竣工验收 | 2d | 2021-08-17 | 2021-08-19 |  | 13d |  |
| 29 |  | 系统维护 | 12d | 2021-08-20 | 2021-09-07 |  |  |  |

## Version 2 (saved 2024-04-07)

Note of the change: 第一版进度计划

Last finish 2021-09-07 → 2024-12-16 (+1196d).

Added:

| ID | Task | Duration | Start | Finish | Predecessors | Constraint | Resources |
| --- | --- | --- | --- | --- | --- | --- | --- |
| 3 | 项目章程批准 | 0d | 2024-04-05 | 2024-04-06 | 2 |  | 杨昆龙; 张涛; 李静; 孙伟 |
| 5 | 项目范围说明书制定完成 | 0d | 2024-04-11 | 2024-04-11 | 4 |  | 杨昆龙; 张涛; 孙伟 |
| 7 | 项目管理计划制定完成 | 0d | 2024-04-15 | 2024-04-15 | 6 |  | 杨昆龙; 张涛; 李静 |
| 11 | 需求规格说明书完成 | 0d | 2024-05-15 | 2024-05-15 | 10 |  | 杨昆龙; 张涛; 邓丽 |
| 27 | 进行项目审计 | 11d | 2024-12-02 | 2024-12-16 | 1, 8, 12, 16, 19, 22, 24 | finish no earlier than 2024-12-16 | 杨昆龙; 邓丽; 张涛; 周敏 |

Removed: 8 概要设计; 9 详细设计; 14 编写代码; 18 模块3测试; 19 模块4测试; 20 模块5测试; 29 系统维护

Changed:

| ID | Task | Start | Finish | Duration | Total float | Predecessors | Other |
| --- | --- | --- | --- | --- | --- | --- | --- |
| 1 | **项目启动** | 2021-03-02 → 2024-04-01 (+1126d) | 2021-03-13 → 2024-04-15 (+1129d) | 10d → 11d |  |  | baseline start none → 2024-04-01; baseline finish none → 2024-04-15 |
| 2 | 制定项目章程 | 2021-03-02 → 2024-04-01 (+1126d) | 2021-03-05 → 2024-04-05 (+1127d) | 3d → 5d | 19.88d → 2d |  | was named 设施准备; constraint none → finish no earlier than 2024-04-05; resources A; B; P; 闫憬睿 → 杨昆龙; 张涛; 李静; 孙伟; baseline start none → 2024-04-01; baseline finish none → 2024-04-05 |
| 4 | 确定项目范围 | 2021-03-08 → 2024-04-08 (+1127d) | 2021-03-11 → 2024-04-11 (+1127d) |  | 14.88d → 0.88d | none → 2 | was named 制定计划; constraint start no earlier than 2021-03-08 → start no earlier than 2024-04-08; resources A; B; 闫憬睿 → 杨昆龙; 张涛; 孙伟; baseline start none → 2024-04-08; baseline finish none → 2024-04-11 |
| 6 | 制定项目管理计划 | 2021-03-11 → 2024-04-11 (+1127d) | 2021-03-12 → 2024-04-15 (+1130d) | 1d → 2d | 14.88d → 0.88d |  | was named 人员分配; constraint none → start no earlier than 2024-04-11; resources A; B → 杨昆龙; 张涛; 李静; baseline start none → 2024-04-11; baseline finish none → 2024-04-15 |
| 8 | **需求分析** | 2021-03-15 → 2024-04-16 (+1128d) | 2021-03-31 → 2024-05-15 (+1141d) | 13d → 22d |  |  | was named 深化设计; baseline start none → 2024-04-16; baseline finish none → 2024-05-15 |
| 9 | 收集和分析用户需求 | 2021-03-15 → 2024-04-17 (+1129d) | 2021-03-18 → 2024-05-10 (+1149d) | 3d → 18d | 35d → 1d | none → 6 | was named 拟定合同; constraint none → finish no earlier than 2024-05-10; resources A; B; C; D → 杨昆龙; 张涛; 邓丽; baseline start none → 2024-04-17; baseline finish none → 2024-05-10 |
| 10 | 编写需求规格说明书 | 2021-03-18 → 2024-05-13 (+1152d) | 2021-03-23 → 2024-05-15 (+1149d) | 3d → 2d | 35d → 0.88d |  | was named 拟定需求文档; constraint none → start no earlier than 2024-05-13; resources A; B; C; D → 杨昆龙; 张涛; 邓丽; baseline start none → 2024-05-13; baseline finish none → 2024-05-15 |
| 12 | **系统设计** | 2021-04-01 → 2024-05-16 (+1141d) | 2021-06-30 → 2024-06-14 (+1080d) | 65d → 22d |  |  | was named 系统实现; baseline start none → 2024-05-16; baseline finish none → 2024-06-14 |
| 13 | 设计并实现系统的整体架构 | 2021-04-01 → 2024-05-16 (+1141d) | 2021-04-08 → 2024-06-03 (+1152d) | 5d → 12d | 33d → 65.88d | 详细设计 → 1, 8 | was named 功能分配; constraint none → start no earlier than 2024-05-16; resources G; H; I → 陈晨; 李静; 王强; 张涛; 赵磊; baseline start none → 2024-05-16; baseline finish none → 2024-06-03 |
| 14 | 设计并实现数据库结构 | 2021-04-09 → 2024-05-20 (+1137d) | 2021-04-16 → 2024-06-10 (+1151d) | 5d → 16d | 102d → 84d | none → 1, 8 | was named 模块划分; constraint start no earlier than 2021-04-09 → finish no earlier than 2024-06-10; resources G; H; I → 李静; 王强; 张涛; 赵磊; 刘洋; 孙伟; baseline start none → 2024-05-20; baseline finish none → 2024-06-10 |
| 15 | 设计用户界面 | 2021-04-19 → 2024-05-16 (+1123d) | 2021-04-21 → 2024-06-14 (+1150d) | 2d → 22d | 49d → 80d | none → 1, 8 | was named 建立统一的代码编写标准; constraint start no earlier than 2021-04-19 → finish no earlier than 2024-06-14; resources J; K; L; M; N; O → 李静; 王强; 张涛; 赵磊; 陈晨; baseline start none → 2024-05-16; baseline finish none → 2024-06-14 |
| 16 | **开发阶段** | 2021-04-30 → 2024-06-17 (+1144d) | 2021-07-17 → 2024-09-30 (+1171d) | 57d → 76d |  |  | was named 系统测试; baseline start none → 2024-06-17; baseline finish none → 2024-09-30 |
| 17 | 编写系统核心功能代码 | 2021-04-30 → 2024-06-17 (+1144d) | 2021-05-12 → 2024-09-30 (+1237d) | 8d → 75d | 59d → 55.88d | none → 13 | was named 模块1测试; constraint none → start no earlier than 2024-06-17; resources Q; R; S → 孙伟; 吴迪; 赵磊; 周敏; baseline start none → 2024-06-17; baseline finish none → 2024-09-30 |
| 18 | 进行单元测试和集成测试 | 2021-05-12 → 2024-07-01 (+1146d) | 2021-05-24 → 2024-09-30 (+1225d) | 8d → 65d | 59d → 55.88d | 17 → none | was named 模块2测试; constraint none → start no earlier than 2024-07-01; resources Q; R; S → 孙伟; 吴迪; 赵磊; 周敏; 郭明; baseline start none → 2024-07-01; baseline finish none → 2024-09-30 |
| 19 | **测试阶段** | 2021-07-12 → 2024-07-01 (+1085d) | 2021-07-26 → 2024-10-15 (+1177d) | 10d → 77d |  | 1, 8, 12, 16 → 1, 8, 12 | was named 系统安装调试; baseline start none → 2024-07-01; baseline finish none → 2024-10-15 |
| 20 | 制定测试计划 | 2021-07-12 → 2024-07-01 (+1085d) | 2021-07-14 → 2024-07-15 (+1097d) | 2d → 11d | 24d → 70d | none → 13, 14, 15 | was named 安装; constraint none → finish no earlier than 2024-07-15; resources J; Q → 陈晨; 孙伟; 吴迪; 周敏; baseline start none → 2024-07-01; baseline finish none → 2024-07-15 |
| 21 | 执行系统测试 | 2021-07-14 → 2024-10-07 (+1181d) | 2021-07-23 → 2024-10-15 (+1180d) |  | 24d → 11d |  | was named 调试; constraint none → finish no earlier than 2024-10-15; resources K; R → 陈晨; 孙伟; 吴迪; 周敏; 郭明; baseline start none → 2024-10-07; baseline finish none → 2024-10-15 |
| 22 | **部署阶段** | 2021-08-02 → 2024-10-16 (+1171d) | 2021-08-16 → 2024-11-15 (+1187d) | 10d → 23d |  |  | was named 系统试运行和培训; baseline start none → 2024-10-16; baseline finish none → 2024-11-15 |
| 23 | 部署系统到生产环境 | 2021-08-02 → 2024-10-16 (+1171d) | 2021-08-03 → 2024-10-31 (+1185d) | 1d → 12d | 18d → 11d | none → 21 | was named 使用培训; constraint none → finish no earlier than 2024-10-31; resources A; B → 陈晨; 郭明; 周敏; baseline start none → 2024-10-16; baseline finish none → 2024-10-31 |
| 24 | 提供用户培训 | 2021-08-03 → 2024-11-01 (+1186d) | 2021-08-10 → 2024-11-15 (+1193d) | 5d → 10d | 18d → 10.88d |  | was named 试运行; constraint none → start no earlier than 2024-11-01; resources A; B → 杨昆龙; 陈晨; 郭明; 周敏; baseline start none → 2024-11-01; baseline finish none → 2024-11-15 |
| 25 | **项目收尾** | 2021-08-17 → 2024-11-16 (+1187d) | 2021-08-19 → 2024-12-16 (+1215d) | 3d → 22d |  |  | was named 竣工验收; baseline start none → 2024-11-16; baseline finish none → 2024-12-16 |
| 26 | 编写项目总结报告 | 2021-08-17 → 2024-11-18 (+1189d) | 2021-08-19 → 2024-11-29 (+1198d) | 2d → 10d | 13d → 11d | none → 1, 8, 12, 16, 19, 22, 24 | was named 竣工验收; constraint none → finish no earlier than 2024-11-29; resources none → 杨昆龙; 邓丽; 张涛; 周敏; 郭明; baseline start none → 2024-11-18; baseline finish none → 2024-11-29 |

## Version 3 (saved 2024-04-08)

Note of the change: 进一步确定项目计划

Last finish stays 2024-12-16. Complete tasks 0 → 2.

Added:

| ID | Task | Duration | Start | Finish | Predecessors | Constraint | Resources |
| --- | --- | --- | --- | --- | --- | --- | --- |
| 14 | 系统架构设计文档完成 | 0d | 2024-05-31 | 2024-05-31 | 13 |  | 陈晨; 李静; 张涛 |
| 16 | 数据库设计文档完成 | 0d | 2024-05-31 | 2024-05-31 | 15 |  | 刘洋; 邓丽; 郭明 |
| 18 | 界面设计原型完成 | 0d | 2024-06-14 | 2024-06-14 | 17 | finish no earlier than 2024-06-14 | 李静; 王强; 张涛; 赵磊; 陈晨 |
| 22 | 核心功能开发完成并通过测试 | 0d | 2024-09-30 | 2024-09-30 | 20, 21 | finish no earlier than 2024-09-30 | 孙伟; 吴迪; 赵磊; 周敏; 郭明 |
| 26 | 系统测试报告完成 | 0d | 2024-10-15 | 2024-10-15 | 24, 25 | finish no earlier than 2024-10-15 | 陈晨; 孙伟; 吴迪; 周敏; 郭明 |
| 29 | 系统部署完成 | 0d | 2024-10-31 | 2024-10-31 | 28 | finish no earlier than 2024-10-31 | 陈晨; 郭明; 周敏 |
| 31 | 用户培训通过 | 0d | 2024-11-15 | 2024-11-15 | 30 | finish no earlier than 2024-11-15 | 杨昆龙; 陈晨; 郭明; 周敏 |
| 34 | 项目总结报告完成 | 0d | 2024-11-29 | 2024-11-29 | 33 | finish no earlier than 2024-11-29 | 杨昆龙; 邓丽; 张涛; 周敏; 郭明 |
| 36 | 项目审计报告完成 | 0d | 2024-12-16 | 2024-12-16 | 35 | finish no earlier than 2024-04-16 | 杨昆龙; 邓丽; 张涛; 周敏 |

Changed:

| ID | Task | Start | Finish | Duration | Complete | Total float | Other |
| --- | --- | --- | --- | --- | --- | --- | --- |
| 1 | **项目启动** | 2024-04-01 A |  |  | 0% → 65% |  |  |
| 2 | 制定项目章程 | 2024-04-01 A | 2024-04-05 A |  | 0% → 100% | 2d → none |  |
| 3 | 项目章程批准 | 2024-04-05 A | 2024-04-06 A |  | 0% → 100% | 6.25d → none |  |
| 4 | 确定项目范围 | 2024-04-08 A |  |  | 0% → 50% |  |  |
| 13 | 设计并实现系统的整体架构 |  | 2024-06-03 → 2024-05-31 (-3d) | 12d → 11d |  | 65.88d → 66.75d | resources 陈晨; 李静; 王强; 张涛; 赵磊 → 陈晨; 李静; 张涛 |
| 15 | 设计并实现数据库结构 | 2024-05-20 → 2024-05-21 (+1d) | 2024-06-10 → 2024-05-31 (-10d) | 16d → 9d |  | 84d → 65.88d | constraint finish no earlier than 2024-06-10 → finish no earlier than 2024-05-31; resources 李静; 王强; 张涛; 赵磊; 刘洋; 孙伟 → 刘洋; 邓丽; 郭明 |
| 17 | 设计用户界面 |  |  |  |  |  | resources 李静; 王强; 张涛; 赵磊; 陈晨 → 王强; 赵磊 |
| 20 | 编写系统核心功能代码 |  |  | 75d → 75.12d |  |  | resources 孙伟; 吴迪; 赵磊; 周敏 → 刘洋; 李静; 赵磊; 王强 |
| 21 | 进行单元测试和集成测试 | 2024-07-01 → 2024-07-16 (+15d) |  | 65d → 54d |  |  | constraint start no earlier than 2024-07-01 → start no earlier than 2024-07-16; resources 孙伟; 吴迪; 赵磊; 周敏; 郭明 → 孙伟; 邓丽; 杨昆龙; 周敏; 郭明 |

## Version 4 (saved 2024-04-15)

Note of the change: 甲方新增需求 变更申请ID: 001

Last finish stays 2024-12-16. Complete tasks 2 → 4.

Changed:

| ID | Task | Start | Finish | Complete | Total float |
| --- | --- | --- | --- | --- | --- |
| 1 | **项目启动** |  |  | 65% → 99% |  |
| 4 | 确定项目范围 |  | 2024-04-11 A | 50% → 100% | 0.88d → none |
| 6 | 制定项目管理计划 | 2024-04-11 A | 2024-04-15 A | 0% → 100% | 0.88d → none |
| 8 | **需求分析** |  |  | 0% → 25% |  |
| 9 | 收集和分析用户需求 | 2024-04-17 A |  | 0% → 28% |  |

## Version 5 (saved 2024-04-16)

Note of the change: 甲方需求变更 变更申请ID: 002

Last finish stays 2024-12-16. Complete tasks 4 → 6.

Changed:

| ID | Task | Start | Finish | Complete | Total float |
| --- | --- | --- | --- | --- | --- |
| 1 | **项目启动** |  | 2024-04-15 A | 99% → 100% |  |
| 5 | 项目范围说明书制定完成 | 2024-04-11 A | 2024-04-11 A | 0% → 100% | 2.88d → none |
| 7 | 项目管理计划制定完成 | 2024-04-15 A | 2024-04-15 A | 0% → 100% | 0.88d → none |
| 8 | **需求分析** |  |  | 25% → 45% |  |
| 9 | 收集和分析用户需求 |  |  | 28% → 50% |  |

## Version 6 (saved 2024-04-16)

Note of the change: 甲方新增需求 变更申请ID: 003

Last finish stays 2024-12-16.

Changed:

| ID | Task | Complete |
| --- | --- | --- |
| 8 | **需求分析** | 45% → 23% |
| 9 | 收集和分析用户需求 | 50% → 25% |
